# Despliegue de Info Cliente

Schedule from MS Project, 2014-07-14 to 2014-09-09, A marks actual dates.
Intelidata

## Calendars

- Estándar: Mon-Fri 09:00-13:00, 15:00-19:00; Sat-Sun off.

## Schedule

| ID | WBS | Task | Duration | Start | Finish | Predecessors | Complete | Remaining | Total slack | Free slack | Constraint |
| --- | --- | --- | --- | --- | --- | --- | --- | --- | --- | --- | --- |
| 1 | 1 | Analisis e Investigación | 3d | 2014-07-14 A | 2014-07-16 A |  | 100% |  |  |  | must start on 2014-07-14 |
| 2 | 2 | **Acceso** | 6d | 2014-07-17 A | 2014-07-24 A | 1 | 100% |  |  |  |  |
| 3 | 2.1 | Login | 2d | 2014-07-17 A | 2014-07-18 A | 1 | 100% |  |  |  |  |
| 4 | 2.2 | Registro | 2d | 2014-07-21 A | 2014-07-22 A | 3 | 100% |  |  |  |  |
| 5 | 2.3 | Validaciones | 3d | 2014-07-22 A | 2014-07-24 A | 4 | 100% |  |  |  |  |
| 6 | 3 | **Landing Page** | 8d | 2014-07-24 A | 2014-08-04 | 2 | 97% | 0.25d |  |  |  |
| 7 | 3.1 | Bienvenida y menú principal | 1d | 2014-07-24 A | 2014-07-24 A | 5 | 100% |  |  |  |  |
| 8 | 3.2 | Timeline | 3d | 2014-07-24 A | 2014-07-28 A | 7 | 100% |  |  |  |  |
| 9 | 3.3 | Menu datos - Perfil | 1d | 2014-07-29 A | 2014-07-29 A | 8 | 100% |  |  |  |  |
| 10 | 3.4 | Encuesta de contacto | 2d | 2014-07-30 A | 2014-07-31 A | 9 | 100% |  |  |  |  |
| 11 | 3.5 | Menu contactenos | 1d | 2014-08-01 A | 2014-08-01 | 10 | 75% | 0.25d | 1d |  |  |
| 12 | 4 | **Graficos** | 11d | 2014-08-04 A | 2014-08-18 | 6 | 38% | 6.88d | 0.75d | 0d |  |
| 13 | 4.1 | Total tráfico | 2d | 2014-08-04 A | 2014-08-05 | 6 | 50% | 1d | 0d |  |  |
| 14 | 4.2 | Titular/Adicional | 2d | 2014-08-06 | 2014-08-07 | 13 |  |  | 0d |  |  |
| 15 | 4.3 | **Histórico por mes** | 1d | 2014-08-08 A | 2014-08-08 | 14 | 75% | 0.25d | 4.75d |  |  |
| 16 | 4.3.1 | Detalle total | 1d | 2014-08-08 A | 2014-08-08 A | 14 | 100% |  |  |  |  |
| 17 | 4.3.2 | Por categoria | 1d | 2014-08-08 A | 2014-08-08 | 14 | 50% | 0.5d | 4.75d | 0d |  |
| 18 | 4.4 | Pie por categoria | 2d | 2014-08-11 | 2014-08-12 | 17 |  |  | 4.75d |  |  |
| 19 | 4.5 | Pie detalle | 2d | 2014-08-13 A | 2014-08-14 A | 18 | 100% |  |  |  |  |
| 20 | 4.6 | Historico comparativo | 2d | 2014-08-15 | 2014-08-18 | 19 |  |  | 0.75d |  |  |
| 21 | 5 | Evolución de mis gastos | 1d | 2014-08-19 A | 2014-08-19 | 12 | 75% | 0.25d | 15d |  |  |
| 22 | 6 | **Sub Categorias** | 3d | 2014-08-20 A | 2014-08-22 | 15 | 58% | 1.25d | 2d | 0d |  |
| 23 | 6.1 | Pie Sub-secciones | 1d | 2014-08-20 A | 2014-08-20 A | 21 | 100% |  |  |  |  |
| 24 | 6.2 | Estadistica y detalle Sub-secciones | 2d | 2014-08-21 A | 2014-08-22 | 23 | 38% | 1.25d | 2d | 0d |  |

| ID | WBS | Task | Duration | Start | Finish | Predecessors | Complete | Remaining | Total slack | Free slack | Constraint |
| --- | --- | --- | --- | --- | --- | --- | --- | --- | --- | --- | --- |
| 25 | 7 | **Condiciones Generales** | 12d | 2014-08-25 A | 2014-09-09 | 22 | 50% | 6d | 0d |  |  |
| 26 | 7.1 | Integrar Google Analitycs | 2d | 2014-08-25 | 2014-08-26 | 24 |  |  | 2.5d | 0d |  |
| 27 | 7.2 | Exportar datos dif. Formatos | 3d | 2014-08-27 A | 2014-08-29 | 26 | 83% | 0.5d | 5d | 3d |  |
| 28 | 7.3 | Template dinámico | 4d | 2014-09-04 A | 2014-09-09 | 27 | 50% | 2d | 0d |  | finish no earlier than 2014-09-09 |
